# Strawman-i1

Schedule from MS Project, 2002-11-25 to 2003-01-07, A marks actual dates.
BetweenMarkets, Inc.

## Calendars

- Standard: Mon-Fri 08:00-12:00, 13:00-17:00; Sat-Sun off.

## Resources

| Resource |
| --- |
| James H |
| Jason B |
| Bunjee G |

## Schedule

| ID | WBS | Task | Duration | Start | Finish | Predecessors | Complete | Remaining | Total slack | Free slack | Resources | Work | Actual work |
| --- | --- | --- | --- | --- | --- | --- | --- | --- | --- | --- | --- | --- | --- |
| 1 | 1 | **Iteration 1 - CMS Online** | 32d | 2002-11-25 A | 2003-01-07 |  | 5% | 30.36d | 0d |  |  | 312h | 16h |
| 2 | 1.1 | **Cleanup of existing content** | 3d | 2002-11-25 A | 2002-11-27 |  | 67% | 1d | 0d |  |  | 24h | 16h |
| 3 | 1.1.1 | Consolidate redundant stylesheets | 1d | 2002-11-25 A | 2002-11-25 A |  | 100% |  |  |  | James H | 8h | 8h |
| 4 | 1.1.2 | Parameterize stylesheet and build for outer template | 1d | 2002-11-26 A | 2002-11-26 A | 3 | 100% |  |  |  | James H | 8h | 8h |
| 5 | 1.1.3 | Reorganize directory structure | 1d | 2002-11-27 | 2002-11-27 | 4 |  |  | 0d |  | James H | 8h |  |
| 6 | 1.2 | **Configuration Management (CM)** | 5d | 2002-11-28 | 2002-12-04 | 2 |  |  | 0d |  |  | 40h |  |
| 7 | 1.2.1 | Prepare CVS | 2d | 2002-11-28 | 2002-11-29 |  |  |  | 0d |  | James H | 16h |  |
| 8 | 1.2.2 | Import into CVS | 1d | 2002-12-02 | 2002-12-02 | 7 |  |  | 0d |  | James H | 8h |  |
| 9 | 1.2.3 | Install Jboss+Tomcat (dev) | 1d | 2002-12-03 | 2002-12-03 | 8 |  |  | 0d |  | James H | 8h |  |
| 10 | 1.2.4 | Install Jboss+Tomcat (prod) | 1d | 2002-12-04 | 2002-12-04 | 9 |  |  | 0d |  | James H | 8h |  |
| 11 | 1.3 | **Install Slide** | 5d | 2002-12-05 | 2002-12-11 | 6 |  |  | 0d |  |  | 40h |  |
| 12 | 1.3.1 | Obtain stable build | 2d | 2002-12-05 | 2002-12-06 |  |  |  | 0d |  | James H | 16h |  |
| 13 | 1.3.2 | Configure Slide | 2d | 2002-12-09 | 2002-12-10 | 12 |  |  | 0d |  | James H | 16h |  |
| 14 | 1.3.3 | Deploy to production | 1d | 2002-12-11 | 2002-12-11 | 13 |  |  | 0d |  | James H | 8h |  |
| 15 | 1.4 | **Import existing content** | 3d | 2002-12-12 | 2002-12-16 | 11 |  |  | 0d |  |  | 24h |  |
| 16 | 1.4.1 | Determine how to best import | 1d | 2002-12-12 | 2002-12-12 |  |  |  | 0d |  | James H | 8h |  |
| 17 | 1.4.2 | Perform import | 2d | 2002-12-13 | 2002-12-16 | 16 |  |  | 0d |  | James H | 16h |  |
| 18 | 1.5 | **Initial Client** | 8d | 2002-12-17 | 2002-12-26 | 15 |  |  | 0d |  |  | 120h |  |
| 19 | 1.5.1 | Upgrade Jean to OS/X | 8d | 2002-12-17 | 2002-12-26 |  |  |  | 0d |  | Jason B | 64h |  |
| 20 | 1.5.2 | Select a DeltaV-compliant client | 4d | 2002-12-17 | 2002-12-20 |  |  |  | 1d | 0d | James H | 32h |  |
| 21 | 1.5.3 | Install on Windows (booth) | 1d | 2002-12-23 | 2002-12-23 | 20 |  |  | 1d | 0d | James H | 8h |  |
| 22 | 1.5.4 | Install on Mac OS/9 (Jean) | 2d | 2002-12-24 | 2002-12-25 | 21 |  |  | 1d |  | James H | 16h |  |
| 23 | 1.6 | **Training - Phase 1** | 8d | 2002-12-27 | 2003-01-07 | 18 |  |  | 0d |  |  | 64h |  |
| 24 | 1.6.1 | Initial training materials (online help) | 4d | 2002-12-27 | 2003-01-01 |  |  |  | 0d |  | James H | 32h |  |
| 25 | 1.6.2 | Train Jean, Stephen, Talinda | 4d | 2003-01-02 | 2003-01-07 | 24 |  |  | 0d |  | James H | 32h |  |
